# Demolition and Rehabilitation of Joel Plant Gold Plant: Phase 03-07

How a schedule from MS Project changed from version to version. A marks actual dates.

## Version 1 (saved 2026-11-22)

Note of the change: feat(wbs-scheduler): add direct Microsoft Project XML and native MPP schedule files

| ID | WBS | Task | Duration | Start | Finish | Predecessors | Total float |
| --- | --- | --- | --- | --- | --- | --- | --- |
| 1 | 1 | **Demolition and Rehabilitation of Joel Plant Gold Plant: Phase 03-07** | 422d? | 2027-12-07 | 2029-09-28 |  | 0d |
| 2 | 1.1 | **Phase 03 - Demolition and Rehabilitation** | 52d? | 2027-12-07 | 2028-03-13 |  | 0d |
| 3 |  | Health & Safety and Environmental Compliance (activity #1 - 07/11/26) | 0d? | 2027-12-07 | 2027-12-07 |  | 0d |
| 4 |  | Site Establishment | 5d? | 2027-12-07 | 2027-12-13 | 3 | 0d |
| 5 |  | Confirm Phase 03 workfront release and isolation | 2d? | 2027-12-14 | 2027-12-15 | 4 | 0d |
| 6 |  | Break up and pulverise above-ground concrete and brickwork | 12d? | 2027-12-17 | 2028-01-26 | 5 | 0d |
| 7 |  | Expose, break up and pulverise below-ground concrete and brickwork | 10d? | 2028-01-27 | 2028-02-09 | 6 | 0d |
| 8 |  | Cut, segregate and remove reinforcement and steel structures | 8d? | 2028-02-10 | 2028-02-21 | 7 | 0d |
| 9 |  | Load, haul and stockpile pulverised material on site | 7d? | 2028-02-22 | 2028-03-01 | 8 | 0d |
| 10 |  | Shape, level and clean the work area | 5d? | 2028-03-02 | 2028-03-08 | 9 | 0d |
| 11 |  | Inspect rehabilitated area and close Phase 03 | 2d? | 2028-03-09 | 2028-03-10 | 10 | 0d |
| 12 |  | Phase 03 complete | 1d? | 2028-03-13 | 2028-03-13 | 11 | 0d |
| 13 | 1.2 | **Phase 02 - Demolition and Rehabilitation** | 67d? | 2028-03-14 | 2028-06-22 |  | 0d |
| 14 |  | Confirm Phase 02 workfront release and isolation | 3d? | 2028-03-14 | 2028-03-16 | 12 | 0d |
| 15 |  | Break up and pulverise above-ground concrete and brickwork | 18d? | 2028-03-17 | 2028-04-12 | 14 | 0d |
| 16 |  | Expose, break up and pulverise below-ground concrete and brickwork | 15d? | 2028-04-13 | 2028-05-09 | 15 | 0d |
| 17 |  | Cut, segregate and remove reinforcement and steel structures | 13d? | 2028-05-10 | 2028-05-26 | 16 | 0d |
| 18 |  | Load, haul and stockpile pulverised material on site | 10d? | 2028-05-29 | 2028-06-09 | 17 | 0d |
| 19 |  | Shape, level and clean the work area | 5d? | 2028-06-12 | 2028-06-19 | 18 | 0d |
| 20 |  | Inspect rehabilitated area and close Phase 02 | 2d? | 2028-06-20 | 2028-06-21 | 19 | 0d |
| 21 |  | Phase 02 complete | 1d? | 2028-06-22 | 2028-06-22 | 20 | 0d |
| 22 | 1.3 | **Phase 04 - Demolition and Rehabilitation** | 52d? | 2028-06-23 | 2028-09-05 |  | 0d |
| 23 |  | Confirm Phase 04 workfront release and isolation | 2d? | 2028-06-23 | 2028-06-26 | 21 | 0d |
| 24 |  | Confirm dam workfront release and environmental controls | 3d? | 2028-06-27 | 2028-06-29 | 23 | 0d |
| 25 |  | Break up and pulverise above-ground concrete and brickwork | 8d? | 2028-06-30 | 2028-07-11 | 24 | 0d |
| 26 |  | Expose, break up and pulverise below-ground concrete and brickwork | 9d? | 2028-07-12 | 2028-07-24 | 25 | 0d |
| 27 |  | Demolish and pulverise the on-site dam structures | 8d? | 2028-07-25 | 2028-08-03 | 26 | 0d |
| 28 |  | Cut, segregate and remove reinforcement and steel structures | 5d? | 2028-08-04 | 2028-08-11 | 27 | 0d |
| 29 |  | Load, haul and stockpile pulverised material on site | 4d? | 2028-08-14 | 2028-08-17 | 28 | 0d |
| 30 |  | Load and haul designated material from Joel Gold Plant to Target Gold Plant | 6d? | 2028-08-18 | 2028-08-25 | 29 | 0d |
| 31 |  | Shape, level and clean the work area | 4d? | 2028-08-28 | 2028-08-31 | 30 | 0d |
| 32 |  | Inspect rehabilitated area and close Phase 04 | 2d? | 2028-09-01 | 2028-09-04 | 31 | 0d |
| 33 |  | Phase 04 complete | 1d? | 2028-09-05 | 2028-09-05 | 32 | 0d |
| 34 | 1.4 | **Phase 01 - Demolition and Rehabilitation** | 108d? | 2028-09-06 | 2029-03-02 |  | 0d |
| 35 |  | Confirm Phase 01 workfront release and isolation | 3d? | 2028-09-06 | 2028-09-08 | 33 | 0d |
| 36 |  | Break up and pulverise above-ground concrete and brickwork | 24d? | 2028-09-11 | 2028-10-13 | 35 | 0d |
| 37 |  | Expose, break up and pulverise below-ground concrete and brickwork | 22d? | 2028-10-16 | 2028-11-14 | 36 | 0d |
| 38 |  | Cut, segregate and remove reinforcement and steel structures | 35d? | 2028-11-15 | 2029-01-29 | 37 | 0d |
| 39 |  | Load and haul pulverised material to Target Plant and stockpile on site | 14d? | 2029-01-30 | 2029-02-16 | 38 | 0d |
| 40 |  | Shape, level and clean the work area | 6d? | 2029-02-19 | 2029-02-26 | 39 | 0d |
| 41 |  | Inspect rehabilitated area and close Phase 01 | 3d? | 2029-02-27 | 2029-03-01 | 40 | 0d |
| 42 |  | Phase 01 complete | 1d? | 2029-03-02 | 2029-03-02 | 41 | 0d |
| 43 | 1.5 | **Phase 06 - Demolition and Rehabilitation** | 78d? | 2029-03-05 | 2029-06-27 |  | 0d |
| 44 |  | Confirm Phase 06 workfront release and isolation | 3d? | 2029-03-05 | 2029-03-07 | 42 | 0d |
| 45 |  | Break up and pulverise above-ground concrete and brickwork | 19d? | 2029-03-08 | 2029-04-06 | 44 | 0d |
| 46 |  | Expose, break up and pulverise below-ground silo foundations | 20d? | 2029-04-09 | 2029-05-08 | 45 | 0d |
| 47 |  | Cut, segregate and remove reinforcement and steel structures | 14d? | 2029-05-09 | 2029-05-28 | 46 | 0d |
| 48 |  | Load, haul and stockpile pulverised material on site | 8d? | 2029-05-29 | 2029-06-07 | 47 | 0d |
| 49 |  | Load and haul designated material from Joel Gold Plant to Target Gold Plant | 7d? | 2029-06-08 | 2029-06-18 | 48 | 0d |
| 50 |  | Shape, level and clean the work area | 4d? | 2029-06-19 | 2029-06-22 | 49 | 0d |
| 51 |  | Inspect rehabilitated area and close Phase 06 | 2d? | 2029-06-25 | 2029-06-26 | 50 | 0d |
| 52 |  | Phase 06 complete | 1d? | 2029-06-27 | 2029-06-27 | 51 | 0d |
| 53 | 1.6 | **Phase 07 - Demolition and Rehabilitation** | 65d? | 2029-06-28 | 2029-09-28 |  | 0d |
| 54 |  | Confirm Phase 07 workfront release and isolation | 3d? | 2029-06-28 | 2029-07-02 | 52 | 0d |
| 55 |  | Break up and pulverise above-ground concrete and brickwork | 16d? | 2029-07-03 | 2029-07-24 | 54 | 0d |
| 56 |  | Expose, break up and pulverise below-ground concrete and brickwork | 14d? | 2029-07-25 | 2029-08-14 | 55 | 0d |
| 57 |  | Cut, segregate and remove reinforcement and steel structures | 13d? | 2029-08-15 | 2029-08-31 | 56 | 0d |
| 58 |  | Load, haul and stockpile pulverised material on site | 10d? | 2029-09-03 | 2029-09-14 | 57 | 0d |
| 59 |  | Shape, level and clean the work area | 6d? | 2029-09-17 | 2029-09-25 | 58 | 0d |
| 60 |  | Inspect rehabilitated area and close Phase 07 | 2d? | 2029-09-26 | 2029-09-27 | 59 | 0d |
| 61 |  | Phase 07 complete | 1d? | 2029-09-28 | 2029-09-28 | 60 | 0d |

## Version 2 (saved 2026-11-22)

Note of the change: chore(docs): update Joel Gold Plant schedule binary

Last finish 2029-09-28 → 2029-10-10 (+12d).

Changed:

| ID | Task | Start | Finish | Duration | Other |
| --- | --- | --- | --- | --- | --- |
| 1 | **Demolition and Rehabilitation of Joel Plant Gold Plant: Phase 03-07** |  | 2029-09-28 → 2029-10-10 (+12d) | 422d? → 430d? |  |
| 2 | **Phase 03 - Demolition and Rehabilitation** |  | 2028-03-13 → 2028-03-24 (+11d) | 52d? → 60d? |  |
| 3 | Health & Safety and Environmental Compliance |  | 2027-12-07 → 2027-12-15 (+8d) | 0d? → 7d | was named Health & Safety and Environmental Compliance (activity #1 - 07/11/26) |
| 4 | Site Establishment | 2027-12-07 → 2027-12-17 (+10d) | 2027-12-13 → 2028-01-18 (+36d) | 5d? → 6d |  |
| 5 | Confirm Phase 03 workfront release and isolation | 2027-12-14 → 2028-01-19 (+36d) | 2027-12-15 → 2028-01-20 (+36d) |  |  |
| 6 | Break up and pulverise above-ground concrete and brickwork | 2027-12-17 → 2028-01-21 (+35d) | 2028-01-26 → 2028-02-07 (+12d) |  |  |
| 7 | Expose, break up and pulverise below-ground concrete and brickwork | 2028-01-27 → 2028-02-08 (+12d) | 2028-02-09 → 2028-02-21 (+12d) |  |  |
| 8 | Cut, segregate and remove reinforcement and steel structures | 2028-02-10 → 2028-02-22 (+12d) | 2028-02-21 → 2028-03-02 (+10d) |  |  |
| 9 | Load, haul and stockpile pulverised material on site | 2028-02-22 → 2028-03-03 (+10d) | 2028-03-01 → 2028-03-13 (+12d) |  |  |
| 10 | Shape, level and clean the work area | 2028-03-02 → 2028-03-14 (+12d) | 2028-03-08 → 2028-03-20 (+12d) |  |  |
| 11 | Inspect rehabilitated area and close Phase 03 | 2028-03-09 → 2028-03-22 (+13d) | 2028-03-10 → 2028-03-23 (+13d) |  |  |
| 12 | Phase 03 complete | 2028-03-13 → 2028-03-24 (+11d) | 2028-03-13 → 2028-03-24 (+11d) |  |  |
| 13 | **Phase 02 - Demolition and Rehabilitation** | 2028-03-14 → 2028-03-27 (+13d) | 2028-06-22 → 2028-07-04 (+12d) |  |  |
| 14 | Confirm Phase 02 workfront release and isolation | 2028-03-14 → 2028-03-27 (+13d) | 2028-03-16 → 2028-03-29 (+13d) |  |  |
| 15 | Break up and pulverise above-ground concrete and brickwork | 2028-03-17 → 2028-03-30 (+13d) | 2028-04-12 → 2028-04-26 (+14d) |  |  |
| 16 | Expose, break up and pulverise below-ground concrete and brickwork | 2028-04-13 → 2028-04-28 (+15d) | 2028-05-09 → 2028-05-19 (+10d) |  |  |
| 17 | Cut, segregate and remove reinforcement and steel structures | 2028-05-10 → 2028-05-22 (+12d) | 2028-05-26 → 2028-06-07 (+12d) |  |  |
| 18 | Load, haul and stockpile pulverised material on site | 2028-05-29 → 2028-06-08 (+10d) | 2028-06-09 → 2028-06-22 (+13d) |  |  |
| 19 | Shape, level and clean the work area | 2028-06-12 → 2028-06-23 (+11d) | 2028-06-19 → 2028-06-29 (+10d) |  |  |
| 20 | Inspect rehabilitated area and close Phase 02 | 2028-06-20 → 2028-06-30 (+10d) | 2028-06-21 → 2028-07-03 (+12d) |  |  |
| 21 | Phase 02 complete | 2028-06-22 → 2028-07-04 (+12d) | 2028-06-22 → 2028-07-04 (+12d) |  |  |
| 22 | **Phase 04 - Demolition and Rehabilitation** | 2028-06-23 → 2028-07-05 (+12d) | 2028-09-05 → 2028-09-15 (+10d) |  |  |
| 23 | Confirm Phase 04 workfront release and isolation | 2028-06-23 → 2028-07-05 (+12d) | 2028-06-26 → 2028-07-06 (+10d) |  |  |
| 24 | Confirm dam workfront release and environmental controls | 2028-06-27 → 2028-07-07 (+10d) | 2028-06-29 → 2028-07-11 (+12d) |  |  |
| 25 | Break up and pulverise above-ground concrete and brickwork | 2028-06-30 → 2028-07-12 (+12d) | 2028-07-11 → 2028-07-21 (+10d) |  |  |
| 26 | Expose, break up and pulverise below-ground concrete and brickwork | 2028-07-12 → 2028-07-24 (+12d) | 2028-07-24 → 2028-08-03 (+10d) |  |  |
| 27 | Demolish and pulverise the on-site dam structures | 2028-07-25 → 2028-08-04 (+10d) | 2028-08-03 → 2028-08-16 (+13d) |  |  |
| 28 | Cut, segregate and remove reinforcement and steel structures | 2028-08-04 → 2028-08-17 (+13d) | 2028-08-11 → 2028-08-23 (+12d) |  |  |
| 29 | Load, haul and stockpile pulverised material on site | 2028-08-14 → 2028-08-24 (+10d) | 2028-08-17 → 2028-08-29 (+12d) |  |  |
| 30 | Load and haul designated material from Joel Gold Plant to Target Gold Plant | 2028-08-18 → 2028-08-30 (+12d) | 2028-08-25 → 2028-09-06 (+12d) |  |  |
| 31 | Shape, level and clean the work area | 2028-08-28 → 2028-09-07 (+10d) | 2028-08-31 → 2028-09-12 (+12d) |  |  |
| 32 | Inspect rehabilitated area and close Phase 04 | 2028-09-01 → 2028-09-13 (+12d) | 2028-09-04 → 2028-09-14 (+10d) |  |  |
| 33 | Phase 04 complete | 2028-09-05 → 2028-09-15 (+10d) | 2028-09-05 → 2028-09-15 (+10d) |  |  |
| 34 | **Phase 01 - Demolition and Rehabilitation** | 2028-09-06 → 2028-09-18 (+12d) | 2029-03-02 → 2029-03-14 (+12d) |  |  |
| 35 | Confirm Phase 01 workfront release and isolation | 2028-09-06 → 2028-09-18 (+12d) | 2028-09-08 → 2028-09-20 (+12d) |  |  |
| 36 | Break up and pulverise above-ground concrete and brickwork | 2028-09-11 → 2028-09-21 (+10d) | 2028-10-13 → 2028-10-25 (+12d) |  |  |
| 37 | Expose, break up and pulverise below-ground concrete and brickwork | 2028-10-16 → 2028-10-26 (+10d) | 2028-11-14 → 2028-11-24 (+10d) |  |  |
| 38 | Cut, segregate and remove reinforcement and steel structures | 2028-11-15 → 2028-11-27 (+12d) | 2029-01-29 → 2029-02-08 (+10d) |  |  |
| 39 | Load and haul pulverised material to Target Plant and stockpile on site | 2029-01-30 → 2029-02-09 (+10d) | 2029-02-16 → 2029-02-28 (+12d) |  |  |
| 40 | Shape, level and clean the work area | 2029-02-19 → 2029-03-01 (+10d) | 2029-02-26 → 2029-03-08 (+10d) |  |  |
| 41 | Inspect rehabilitated area and close Phase 01 | 2029-02-27 → 2029-03-09 (+10d) | 2029-03-01 → 2029-03-13 (+12d) |  |  |
| 42 | Phase 01 complete | 2029-03-02 → 2029-03-14 (+12d) | 2029-03-02 → 2029-03-14 (+12d) |  |  |
| 43 | **Phase 06 - Demolition and Rehabilitation** | 2029-03-05 → 2029-03-15 (+10d) | 2029-06-27 → 2029-07-09 (+12d) |  |  |
| 44 | Confirm Phase 06 workfront release and isolation | 2029-03-05 → 2029-03-15 (+10d) | 2029-03-07 → 2029-03-19 (+12d) |  |  |
| 45 | Break up and pulverise above-ground concrete and brickwork | 2029-03-08 → 2029-03-20 (+12d) | 2029-04-06 → 2029-04-18 (+12d) |  |  |
| 46 | Expose, break up and pulverise below-ground silo foundations | 2029-04-09 → 2029-04-19 (+10d) | 2029-05-08 → 2029-05-18 (+10d) |  |  |
| 47 | Cut, segregate and remove reinforcement and steel structures | 2029-05-09 → 2029-05-21 (+12d) | 2029-05-28 → 2029-06-07 (+10d) |  |  |
| 48 | Load, haul and stockpile pulverised material on site | 2029-05-29 → 2029-06-08 (+10d) | 2029-06-07 → 2029-06-19 (+12d) |  |  |
| 49 | Load and haul designated material from Joel Gold Plant to Target Gold Plant | 2029-06-08 → 2029-06-20 (+12d) | 2029-06-18 → 2029-06-28 (+10d) |  |  |
| 50 | Shape, level and clean the work area | 2029-06-19 → 2029-06-29 (+10d) | 2029-06-22 → 2029-07-04 (+12d) |  |  |
| 51 | Inspect rehabilitated area and close Phase 06 | 2029-06-25 → 2029-07-05 (+10d) | 2029-06-26 → 2029-07-06 (+10d) |  |  |
| 52 | Phase 06 complete | 2029-06-27 → 2029-07-09 (+12d) | 2029-06-27 → 2029-07-09 (+12d) |  |  |
| 53 | **Phase 07 - Demolition and Rehabilitation** | 2029-06-28 → 2029-07-10 (+12d) | 2029-09-28 → 2029-10-10 (+12d) |  |  |
| 54 | Confirm Phase 07 workfront release and isolation | 2029-06-28 → 2029-07-10 (+12d) | 2029-07-02 → 2029-07-12 (+10d) |  |  |
| 55 | Break up and pulverise above-ground concrete and brickwork | 2029-07-03 → 2029-07-13 (+10d) | 2029-07-24 → 2029-08-03 (+10d) |  |  |
| 56 | Expose, break up and pulverise below-ground concrete and brickwork | 2029-07-25 → 2029-08-06 (+12d) | 2029-08-14 → 2029-08-24 (+10d) |  |  |
| 57 | Cut, segregate and remove reinforcement and steel structures | 2029-08-15 → 2029-08-27 (+12d) | 2029-08-31 → 2029-09-12 (+12d) |  |  |
| 58 | Load, haul and stockpile pulverised material on site | 2029-09-03 → 2029-09-13 (+10d) | 2029-09-14 → 2029-09-27 (+13d) |  |  |
| 59 | Shape, level and clean the work area | 2029-09-17 → 2029-09-28 (+11d) | 2029-09-25 → 2029-10-05 (+10d) |  |  |
| 60 | Inspect rehabilitated area and close Phase 07 | 2029-09-26 → 2029-10-08 (+12d) | 2029-09-27 → 2029-10-09 (+12d) |  |  |
| 61 | Phase 07 complete | 2029-09-28 → 2029-10-10 (+12d) | 2029-09-28 → 2029-10-10 (+12d) |  |  |
